# SATAV

Schedule from ProjectLibre, 2026-07-02 to 2026-07-28.

## Calendars

- Estandar: Mon-Fri 08:00-12:00, 13:00-17:00; Sat-Sun off.

## Resources

| Resource |
| --- |
| No Asignado |
| Gerardo Sánchez |

## Schedule

| ID | WBS | Task | Duration | Start | Finish | Predecessors | Resources |
| --- | --- | --- | --- | --- | --- | --- | --- |
| 1 | 1 | **SATAV COMPLETO** | 18.5d | 2026-07-02 | 2026-07-28 |  |  |
| 2 | 1.1 | **Diseño** | 3d | 2026-07-02 | 2026-07-06 |  |  |
| 3 | 1.1.1 | Modelo de datos (esquemas + RLS + RPC) | 1d | 2026-07-02 | 2026-07-02 |  | Gerardo Sánchez |
| 4 | 1.1.2 | Diseño UI/UX | 1d | 2026-07-03 | 2026-07-03 | 3 | Gerardo Sánchez |
| 5 | 1.1.3 | Definción Legal (aviso privacidad + firma) | 1d | 2026-07-06 | 2026-07-06 | 4 | Gerardo Sánchez |
| 6 | 1.2 | **Infra y Base** | 2.5d | 2026-07-07 | 2026-07-09 |  |  |
| 7 | 1.2.1 | Infraestructura (subdominio + Cloudflare + FTP + repo + Action) | 1d | 2026-07-07 | 2026-07-07 | 5 | Gerardo Sánchez |
| 8 | 1.2.2 | Setup Supabase (BD + esquema + RLS + RPC) | 1d | 2026-07-08 | 2026-07-08 | 7 | Gerardo Sánchez |
| 9 | 1.2.3 | Auth del panel + reset | 0.5d | 2026-07-09 | 2026-07-09 | 8 | Gerardo Sánchez |
| 10 | 1.3 | **Autoservicio** | 4.5d | 2026-07-09 | 2026-07-15 |  |  |
| 11 | 1.3.1 | Formulario de captura | 1.5d | 2026-07-09 | 2026-07-10 | 9 | Gerardo Sánchez |
| 12 | 1.3.2 | Reglamento (22 cláusulas + versión) | 0.5d | 2026-07-13 | 2026-07-13 | 11 | Gerardo Sánchez |
| 13 | 1.3.3 | Firma manuscrita digital | 1.5d | 2026-07-13 | 2026-07-14 | 12 | Gerardo Sánchez |
| 14 | 1.3.4 | Guardar registro "pendiente" + comprobante | 1d | 2026-07-15 | 2026-07-15 | 13 | Gerardo Sánchez |
| 15 | 1.4 | **Panel y Roles** | 3.5d | 2026-07-16 | 2026-07-21 |  |  |
| 16 | 1.4.1 | Panel: búsqueda + edicion + pendientes | 1.5d | 2026-07-16 | 2026-07-17 | 14, 9 | Gerardo Sánchez |
| 17 | 1.4.2 | Instalacion TI: No. de Tag + estado + ciclo de vida | 1d | 2026-07-17 | 2026-07-20 | 16 | Gerardo Sánchez |
| 18 | 1.4.3 | Administración: estacionamiento + pago | 1d | 2026-07-20 | 2026-07-21 | 17 | Gerardo Sánchez |
| 19 | 1.5 | **Pruebas y cierre** | 5d | 2026-07-21 | 2026-07-28 |  |  |
| 20 | 1.5.1 | Pruebas (funcional + RLS + usabilidad) | 2.5d | 2026-07-21 | 2026-07-23 | 18 | Gerardo Sánchez |
| 21 | 1.5.2 | Deploy a produccion | 0.5d | 2026-07-24 | 2026-07-24 | 20 | Gerardo Sánchez |
| 22 | 1.5.3 | Manual + capacitación | 1.5d | 2026-07-24 | 2026-07-27 | 21 | Gerardo Sánchez |
| 23 | 1.5.4 | Aceptacion + acta de cierre | 0.5d | 2026-07-28 | 2026-07-28 | 22 | Gerardo Sánchez |
